# CRO - JEDI

Schedule from MS Project, 2011-08-22 to 2011-10-03, A marks actual dates.

## Calendars

- Padrão: Mon-Fri 09:00-12:00, 13:00-18:00; Sat-Sun off.

## Resources

| Resource |
| --- |
| Ivan |
| Eduardo |
| Orlando |
| Davi |
| JEDI |
| Eduardo, Ivan |
| Orlando, Davi |
| Orlando,Davi |
| Ivan, Orlando |
| Davi, Eduardo |

## Schedule

| ID | WBS | Task | Duration | Start | Finish | Predecessors | Complete | Remaining | Total slack | Free slack | Constraint | Resources | Work | Actual work |
| --- | --- | --- | --- | --- | --- | --- | --- | --- | --- | --- | --- | --- | --- | --- |
| 1 | 1 | **Fitness Mobile - JEDI** | 31d | 2011-08-22 09:00 A | 2011-10-03 18:00 |  | 12% | 27.35d | 0d |  |  |  | 339h | 16h |
| 2 | 1.1 | **RF_11: Escolha do modo de visualização** | 15.12d | 2011-08-22 09:00 A | 2011-09-12 10:00 |  | 35% | 9.86d | 15.88d |  |  | JEDI | 132.5h | 8h |
| 3 | 1.1.1 | Realizar análise do requisito | 1h | 2011-08-22 09:00 A | 2011-08-22 10:00 A |  | 100% |  |  |  |  | Ivan | 1h | 1h |
| 4 | 1.1.2 | Criar Diagrama de Classes, Caso de Uso e Diagrama Objeto Relacional | 30min | 2011-08-22 10:00 A | 2011-08-22 10:30 A | 3 | 100% |  |  |  |  | Ivan | 0.5h | 0.5h |
| 5 | 1.1.3 | Definir a interface de interação com o usuário | 1h | 2011-08-22 10:30 A | 2011-08-22 11:30 A | 4 | 100% |  |  |  |  | Eduardo | 1h | 1h |
| 6 | 1.1.4 | Codificar | 4h | 2011-09-09 09:00 A | 2011-09-09 14:00 | 5 | 38% | 2.5h | 15.88d | 0d |  | Eduardo | 4h | 1.5h |
| 7 | 1.1.5 | Revisar | 4h | 2011-09-09 14:00 | 2011-09-09 18:00 | 6 |  |  | 15.88d | 0d |  | Orlando | 4h |  |
| 8 | 1.1.6 | Testar | 1h | 2011-09-12 09:00 | 2011-09-12 10:00 | 7 |  |  | 15.88d |  |  | Davi | 1h |  |
| 9 | 1.2 | **RF_01: Manter dados do Usuário** | 15d | 2011-08-29 09:00 A | 2011-09-16 18:00 |  | 17% | 12.5d | 11d |  |  | JEDI | 128h | 8h |
| 10 | 1.2.1 | Realizar análise do requisito | 1h | 2011-08-29 09:00 A | 2011-08-29 10:00 A |  | 100% |  |  |  | start no earlier than 2011-08-29 09:00 | Orlando | 1h | 1h |
| 11 | 1.2.2 | Criar Diagrama de Classes, Caso de Uso e Diagrama Objeto Relacional | 1h | 2011-08-29 10:00 A | 2011-08-29 11:00 A | 10 | 100% |  |  |  |  | Orlando | 1h | 1h |
| 12 | 1.2.3 | Criação da camada de acesso à base de dados | 2h | 2011-08-29 11:00 A | 2011-08-29 14:00 A | 11 | 100% |  |  |  |  | Ivan | 2h | 2h |
| 13 | 1.2.4 | Codificação do CRUD | 2h | 2011-09-09 09:00 | 2011-09-09 11:00 | 12 |  |  | 15.5d | 0d | start no earlier than 2011-09-09 09:00 | Eduardo | 2h |  |
| 14 | 1.2.5 | Revisar | 1h | 2011-09-09 11:00 | 2011-09-09 12:00 | 13 |  |  | 15.5d | 0d |  | Davi | 1h |  |
| 15 | 1.2.6 | Testar | 1h | 2011-09-09 13:00 | 2011-09-09 14:00 | 14 |  |  | 15.5d | 4.5d |  | Davi | 1h |  |
| 16 | 1.2.7 | Preparar apresentação da sprint | 1d | 2011-09-16 09:00 | 2011-09-16 18:00 | 15 |  |  | 11d | 0d | start no earlier than 2011-09-16 09:00 |  |  |  |
| 17 | 1.2.8 | Apresentar os resultados do RF 01 e RF 11 | 1d | 2011-09-16 09:00 | 2011-09-16 18:00 | 16FF |  |  | 11d |  |  |  |  |  |
| 18 | 1.3 | **RF_06: Mostrar o desenvolvimento do usuário por periodo** | 5.5d | 2011-09-05 09:00 | 2011-09-12 14:00 |  |  |  | 15.5d |  |  | JEDI | 66h |  |
| 19 | 1.3.1 | Analisar o requisito | 8h | 2011-09-05 09:00 | 2011-09-05 18:00 |  |  |  | 18.75d | 0d | finish no earlier than 2011-09-05 18:00 | Eduardo, Ivan | 8h |  |
| 20 | 1.3.2 | Criar Diagrama de Classes, Caso de Uso e Diagrama Objeto Relacional | 6h | 2011-09-06 09:00 | 2011-09-06 16:00 | 19 |  |  | 18.75d | 0d | start no earlier than 2011-09-05 09:00 | Orlando, Davi | 6h |  |
| 21 | 1.3.3 | Codificar | 4h | 2011-09-06 16:00 | 2011-09-07 11:00 | 20 |  |  | 18.75d |  |  | Orlando,Davi | 4h |  |
| 22 | 1.3.4 | Revisar | 4h | 2011-09-12 09:00 | 2011-09-12 14:00 |  |  |  | 15.5d |  | start no earlier than 2011-09-12 09:00 | Eduardo, Ivan | 4h |  |
| 23 | 1.4 | **RF_10: Controle das atividades durante o exercício** | 0.31d | 2011-09-19 09:00 | 2011-09-19 11:30 |  |  |  | 10.69d |  |  |  | 4.5h |  |
| 24 | 1.4.1 | Realizar análise do requisito | 1h | 2011-09-19 09:00 | 2011-09-19 10:00 |  |  |  | 10.69d | 0d | start no earlier than 2011-09-19 09:00 | Eduardo; Davi | 2h |  |
| 25 | 1.4.2 | Criar Diagrama de Classes, Caso de Uso e Diagrama Objeto Relacional | 30min | 2011-09-19 10:00 | 2011-09-19 10:30 | 24 |  |  | 10.69d | 0d | start no earlier than 2011-09-19 09:00 | Eduardo; Davi | 1h |  |
| 26 | 1.4.3 | Definir a interface de interação com o usuário | 30min | 2011-09-19 10:30 | 2011-09-19 11:00 | 25 |  |  | 10.69d | 0d | start no earlier than 2011-09-19 09:00 | Eduardo; Davi | 1h |  |
| 27 | 1.4.4 | Codificar | 0.06d | 2011-09-19 11:00 | 2011-09-19 11:30 | 26 |  |  | 10.69d |  |  | Ivan, Orlando | 0.5h |  |

Notes:
- 2: Esta atividade depende do Requisito RFN_03 da equipe DroidMaster.
- 9: Esta atividade depende do Requisito RFN_03 da equipe DroidMaster e RF_11 da nossa equipe.

| ID | WBS | Task | Duration | Start | Finish | Predecessors | Total slack | Constraint | Resources | Work |
| --- | --- | --- | --- | --- | --- | --- | --- | --- | --- | --- |
| 28 | 1.5 | **RF_12: Exportar Informações** | 1d | 2011-10-03 09:00 | 2011-10-03 18:00 |  | 0d |  |  | 8h |
| 29 | 1.5.1 | Realizar análise do requisito | 1.5h | 2011-10-03 09:00 | 2011-10-03 10:30 |  | 0d | start no earlier than 2011-10-03 09:00 | Davi, Eduardo | 1.5h |
| 30 | 1.5.2 | Criar Diagrama de Classes, Caso de Uso e Diagrama de Sequencia | 1h | 2011-10-03 10:30 | 2011-10-03 11:30 | 29 | 0d | start no earlier than 2011-10-03 09:00 | Davi, Eduardo | 1h |
| 31 | 1.5.3 | Codificar | 3h | 2011-10-03 11:30 | 2011-10-03 15:30 | 30 | 0d | start no earlier than 2011-10-03 09:00 | Ivan, Orlando | 3h |
| 32 | 1.5.4 | Revisar | 30min | 2011-10-03 15:30 | 2011-10-03 16:00 | 31 | 0d | start no earlier than 2011-10-03 09:00 | Ivan, Orlando | 0.5h |
| 33 | 1.5.5 | Testar | 2h | 2011-10-03 16:00 | 2011-10-03 18:00 | 32 | 0d | start no earlier than 2011-10-03 09:00 | Ivan, Orlando | 2h |
