# CRO - DroidMaster

Schedule from MS Project, 2011-08-15 to 2011-09-02.

## Calendars

- Padrão: Mon-Fri 09:00-12:00, 13:00-18:00; Sat-Sun off.

## Resources

| Resource |
| --- |
| Bruno |
| Daniel |
| DROIDMASTER |
| Thiago Abreu |
| Gustavo |
| Wlysses |
| Rafael |

## Schedule

| ID | WBS | Task | Duration | Start | Finish | Predecessors | Total slack | Free slack | Constraint | Resources | Work |
| --- | --- | --- | --- | --- | --- | --- | --- | --- | --- | --- | --- |
| 1 | 1 | **Fitness Mobile - DroidMaster** | 14.88d? | 2011-08-15 09:00 | 2011-09-02 17:00 |  | 0d |  |  | DROIDMASTER | 548h |
| 2 | 1.1 | **Primeira Semana** | 1.62d | 2011-08-15 09:00 | 2011-08-16 15:00 |  | 3.38d | 0d |  | DROIDMASTER | 47h |
| 3 | 1.1.1 | **RNF_03: Definição da UI para Aplicação** | 1.62d | 2011-08-15 09:00 | 2011-08-16 15:00 |  | 3.38d |  |  | DROIDMASTER | 34h |
| 4 | 1.1.1.1 | Realizar análise do requisito | 3h | 2011-08-15 09:00 | 2011-08-15 12:00 |  | 3.38d | 0d | start no earlier than 2011-08-15 09:00 | Daniel | 3h |
| 5 | 1.1.1.2 | Construir um prototipo | 8h | 2011-08-15 13:00 | 2011-08-16 12:00 | 4 | 3.38d | 0d |  | Thiago Abreu; Gustavo | 16h |
| 6 | 1.1.1.3 | Reunião para definir Layout | 2h | 2011-08-16 13:00 | 2011-08-16 15:00 | 5 | 3.38d |  |  | Bruno | 2h |
| 7 | 1.2 | **Segunda Semana** | 4.12d | 2011-08-16 15:00 | 2011-08-22 16:00 | 2 | 0d |  |  | DROIDMASTER | 60h |
| 8 | 1.2.1 | **RF_07: Registro de rastreamento do usuário via GPS** | 0.75d | 2011-08-22 09:00 | 2011-08-22 16:00 |  | 0d |  |  | DROIDMASTER | 18h |
| 9 | 1.2.1.1 | Realizar análise do requisito | 3h | 2011-08-22 09:00 | 2011-08-22 12:00 |  | 0d |  | start no earlier than 2011-08-22 09:00 | Bruno; Daniel | 6h |
| 10 | 1.2.1.2 | Criar Diagrama de Classes, Caso de Uso e Diagrama Objeto Relacional | 2h | 2011-08-22 13:00 | 2011-08-22 15:00 | 9 | 0d |  |  | Bruno; Daniel | 4h |
| 11 | 1.2.1.3 | Definir a interface de interação com o usuário, como o mapa será mostrado | 1h | 2011-08-22 15:00 | 2011-08-22 16:00 | 10 | 0d |  |  | Bruno; Daniel | 2h |
| 12 | 1.2.2 | **RF_08: Fornecer Mapa do percurso percorrido** | 0.25d | 2011-08-16 15:00 | 2011-08-16 17:00 |  | 3.88d |  |  | DROIDMASTER | 6h |
| 13 | 1.2.2.1 | Realizar análise do requisito | 1.5h | 2011-08-16 15:00 | 2011-08-16 16:30 |  | 3.88d | 0d |  | Wlysses; Rafael | 3h |
| 14 | 1.2.2.2 | Criar Diagrama de Classes, Caso de Uso e Diagrama Objeto Relacional | 0.5h | 2011-08-16 16:30 | 2011-08-16 17:00 | 13 | 3.88d |  |  | Rafael; Wlysses | 1h |
| 15 | 1.2.3 | **RF_09: Disponibilizar para o usuário o desempenho no percurso rastreado** | 0.12d | 2011-08-16 15:00 | 2011-08-16 16:00 |  | 4d |  |  | DROIDMASTER | 3h |
| 16 | 1.2.3.1 | Analisar o requisito | 0.5h | 2011-08-16 15:00 | 2011-08-16 15:30 |  | 4d | 0d |  | Bruno; Daniel | 1h |
| 17 | 1.2.3.2 | Criar Diagrama de Classes, Caso de Uso e Diagrama Objeto Relacional | 0.5h | 2011-08-16 15:30 | 2011-08-16 16:00 | 16 | 4d |  |  | Bruno; Daniel | 1h |
| 18 | 1.3 | **Terceira Semana** | 1.88d | 2011-08-22 16:00 | 2011-08-24 15:00 | 7 | 0d |  |  | DROIDMASTER | 45h |
| 19 | 1.3.1 | **RNF_03: Definição da UI para Aplicação** | 1.88d | 2011-08-22 16:00 | 2011-08-24 15:00 |  | 0d |  |  | DROIDMASTER | 30h |
| 20 | 1.3.1.1 | Criar Diagrama de Classes, Caso de Uso e Diagrama de Sequencia | 4h | 2011-08-22 16:00 | 2011-08-23 11:00 |  | 0d |  |  | Rafael | 4h |
| 21 | 1.3.1.2 | Codificar | 7h | 2011-08-23 11:00 | 2011-08-24 10:00 | 20 | 0d |  |  | Bruno | 7h |
| 22 | 1.3.1.3 | Revisar | 2h | 2011-08-24 10:00 | 2011-08-24 12:00 | 21 | 0d |  |  | Daniel | 2h |
| 23 | 1.3.1.4 | Testar | 2h | 2011-08-24 13:00 | 2011-08-24 15:00 | 22 | 0d |  |  | Wlysses | 2h |
| 24 | 1.4 | **Quarta Semana** | 1.88d? | 2011-08-24 15:00 | 2011-08-26 14:00 | 18 | 0d |  |  | DROIDMASTER | 82h |
| 25 | 1.4.1 | **RNF_03: Definição da UI para Aplicação** | 1d? | 2011-08-24 15:00 | 2011-08-25 15:00 |  | 0.88d |  |  | DROIDMASTER | 24h |
| 26 | 1.4.1.1 | Aprovação de Layout | 8h? | 2011-08-24 15:00 | 2011-08-25 15:00 |  | 0.88d |  |  | Thiago Abreu; Gustavo | 16h |

Notes:
- 5: Lembrando que como não se tem os diagramas definidos pelos os outros grupos, o prototipo servirar mais para definir color e navegação
- 6: Fazer uma reunião no inicio do projeto para definição dos padrões,cores,etc relacionado a aplicação,registrar a pauta da reunião em documento que será disponibilizado para todas as equipes

| ID | WBS | Task | Duration | Start | Finish | Predecessors | Total slack | Free slack | Resources | Work |
| --- | --- | --- | --- | --- | --- | --- | --- | --- | --- | --- |
| 27 | 1.4.2 | **RF_07: Registro de rastreamento do usuário via GPS** | 1.88d | 2011-08-24 15:00 | 2011-08-26 14:00 |  | 0d |  | DROIDMASTER | 43h |
| 28 | 1.4.2.1 | Criar Plano de Teste | 2h | 2011-08-24 15:00 | 2011-08-24 17:00 |  | 0d |  | Wlysses | 2h |
| 29 | 1.4.2.2 | Criação da funcionalidade de iniciar registro | 4.5h | 2011-08-24 17:00 | 2011-08-25 13:30 | 28 | 0d |  | Thiago Abreu; Gustavo | 9h |
| 30 | 1.4.2.3 | Criação da funcionalidade de finalizar registro | 4.5h | 2011-08-25 13:30 | 2011-08-25 18:00 | 29 | 0d |  | Thiago Abreu; Gustavo | 9h |
| 31 | 1.4.2.4 | Acesso API para leitura dos dados | 4h | 2011-08-26 09:00 | 2011-08-26 14:00 | 30 | 0d |  | Thiago Abreu; Gustavo | 8h |
| 32 | 1.5 | **Quinta Semana** | 0.56d | 2011-08-26 14:00 | 2011-08-29 09:30 | 24 | 0d |  | DROIDMASTER | 26.5h |
| 33 | 1.5.1 | **RF_08: Fornecer Mapa do percurso percorrido** | 0.56d | 2011-08-26 14:00 | 2011-08-29 09:30 |  | 0d |  | DROIDMASTER | 12.5h |
| 34 | 1.5.1.1 | Codificar | 3.5h | 2011-08-26 14:00 | 2011-08-26 17:30 |  | 0d |  | Thiago Abreu; Gustavo | 7h |
| 35 | 1.5.1.2 | Revisar | 1h | 2011-08-26 17:30 | 2011-08-29 09:30 | 34 | 0d |  | Wlysses | 1h |
| 36 | 1.5.2 | **RF_07: Registro de rastreamento do usuário via GPS** | 0.25d | 2011-08-26 14:00 | 2011-08-26 16:00 |  | 0.31d |  | DROIDMASTER | 4h |
| 37 | 1.5.2.1 | Criar Plano de Teste | 2h | 2011-08-26 14:00 | 2011-08-26 16:00 |  | 0.31d |  | Wlysses | 2h |
| 38 | 1.5.3 | **RF_09: Disponibilizar para o usuário o desempenho no percurso rastreado** | 0.25d | 2011-08-26 14:00 | 2011-08-26 16:00 |  | 0.31d |  | DROIDMASTER | 5.5h |
| 39 | 1.5.3.1 | Codificar | 1.5h | 2011-08-26 14:00 | 2011-08-26 15:30 |  | 0.31d | 0d | Thiago Abreu; Gustavo | 3h |
| 40 | 1.5.3.2 | Revisar | 30min | 2011-08-26 15:30 | 2011-08-26 16:00 | 39 | 0.31d |  | Wlysses | 0.5h |
| 41 | 1.6 | **Sexta Semana** | 0.88d | 2011-08-29 09:30 | 2011-08-29 17:30 | 32 | 0d |  | DROIDMASTER | 21h |
| 42 | 1.6.1 | **RNF_03: Definição da UI para Aplicação** | 0.88d | 2011-08-29 09:30 | 2011-08-29 17:30 |  | 0d |  | DROIDMASTER | 14h |
| 43 | 1.6.1.1 | Codificar | 7h | 2011-08-29 09:30 | 2011-08-29 17:30 |  | 0d |  | Rafael | 7h |
| 44 | 1.7 | **Setima Semana** | 2.19d | 2011-08-29 17:30 | 2011-09-01 10:00 | 41 | 0d |  | DROIDMASTER | 78h |
| 45 | 1.7.1 | **RNF_03: Definição da UI para Aplicação** | 0.5d | 2011-08-29 17:30 | 2011-08-30 13:30 |  | 1.69d |  | DROIDMASTER | 8h |
| 46 | 1.7.1.1 | Revisar | 2h | 2011-08-29 17:30 | 2011-08-30 10:30 |  | 1.69d | 0d | Bruno | 2h |
| 47 | 1.7.1.2 | Testar | 2h | 2011-08-30 10:30 | 2011-08-30 13:30 | 46 | 1.69d |  | Wlysses | 2h |
| 48 | 1.7.2 | **RF_07: Registro de rastreamento do usuário via GPS** | 2.19d | 2011-08-29 17:30 | 2011-09-01 10:00 |  | 0d |  | DROIDMASTER | 52.5h |
| 49 | 1.7.2.1 | Criação da funcionalidade de iniciar registro | 4.5h | 2011-08-29 17:30 | 2011-08-30 14:00 |  | 0d |  | Thiago Abreu; Gustavo | 9h |
| 50 | 1.7.2.2 | Criação da funcionalidade de finalizar registro | 4.5h | 2011-08-30 14:00 | 2011-08-31 09:30 | 49 | 0d |  | Thiago Abreu; Gustavo | 9h |
| 51 | 1.7.2.3 | Acesso API para leitura dos dados | 4h | 2011-08-31 09:30 | 2011-08-31 14:30 | 50 | 0d |  | Thiago Abreu; Gustavo | 8h |
| 52 | 1.7.2.4 | Guardar na base de dados | 4.5h | 2011-08-31 14:30 | 2011-09-01 10:00 | 51 | 0d |  | Thiago Abreu; Gustavo | 9h |

Notes:
- 28: Criar um plano de teste para diminuir a possibilidade de falhas / Modificar o escopo do projeto
- 37: Criar um plano de teste para diminuir a possibilidade de falhas / Modificar o escopo do projeto

| ID | WBS | Task | Duration | Start | Finish | Predecessors | Total slack | Free slack | Resources | Work |
| --- | --- | --- | --- | --- | --- | --- | --- | --- | --- | --- |
| 53 | 1.8 | **Oitava Semana** | 0.88d | 2011-09-01 10:00 | 2011-09-01 18:00 | 44 | 0d |  | DROIDMASTER | 38.5h |
| 54 | 1.8.1 | **RF_07: Registro de rastreamento do usuário via GPS** | 0.88d | 2011-09-01 10:00 | 2011-09-01 18:00 |  | 0d |  | DROIDMASTER | 19h |
| 55 | 1.8.1.1 | Atualização das informações | 5h | 2011-09-01 10:00 | 2011-09-01 16:00 |  | 0d |  | Thiago Abreu; Gustavo | 10h |
| 56 | 1.8.1.2 | Revisar | 2h | 2011-09-01 16:00 | 2011-09-01 18:00 | 55 | 0d |  | Bruno | 2h |
| 57 | 1.8.2 | **RF_08: Fornecer Mapa do percurso percorrido** | 0.56d | 2011-09-01 10:00 | 2011-09-01 15:30 |  | 0.31d |  | DROIDMASTER | 12.5h |
| 58 | 1.8.2.1 | Codificar | 3.5h | 2011-09-01 10:00 | 2011-09-01 14:30 |  | 0.31d | 0d | Thiago Abreu; Gustavo | 7h |
| 59 | 1.8.2.2 | Revisar | 1h | 2011-09-01 14:30 | 2011-09-01 15:30 | 58 | 0.31d |  | Wlysses | 1h |
| 60 | 1.9 | **Nona Semana** | 0.38d | 2011-09-02 09:00 | 2011-09-02 12:00 | 53 | 0d |  | DROIDMASTER | 14h |
| 61 | 1.9.1 | **RF_09: Disponibilizar para o usuário o desempenho no percurso rastreado** | 0.31d | 2011-09-02 09:00 | 2011-09-02 11:30 |  | 0.06d |  | DROIDMASTER | 5h |
| 62 | 1.9.1.1 | Testar o requisito | 2.5h | 2011-09-02 09:00 | 2011-09-02 11:30 |  | 0.06d |  | Wlysses | 2.5h |
| 63 | 1.9.2 | **RF_07: Registro de rastreamento do usuário via GPS** | 0.38d | 2011-09-02 09:00 | 2011-09-02 12:00 |  | 0d |  | DROIDMASTER | 6h |
| 64 | 1.9.2.1 | Testar | 3h | 2011-09-02 09:00 | 2011-09-02 12:00 |  | 0d |  | Wlysses | 3h |
| 65 | 1.10 | **Decima Semana** | 0.5d | 2011-09-02 13:00 | 2011-09-02 17:00 | 60 | 0d |  | DROIDMASTER | 17h |
| 66 | 1.10.1 | **RF_08: Fornecer Mapa do percurso percorrido** | 0.5d | 2011-09-02 13:00 | 2011-09-02 17:00 |  | 0d |  | DROIDMASTER | 8h |
| 67 | 1.10.1.1 | Testar | 4h | 2011-09-02 13:00 | 2011-09-02 17:00 |  | 0d |  | Wlysses | 4h |
| 68 | 1.10.2 | **RF_09: Disponibilizar para o usuário o desempenho no percurso rastreado** | 0.31d | 2011-09-02 13:00 | 2011-09-02 15:30 |  | 0.19d |  | DROIDMASTER | 5h |
| 69 | 1.10.2.1 | Testar o requisito | 2.5h | 2011-09-02 13:00 | 2011-09-02 15:30 |  | 0.19d |  | Wlysses | 2.5h |
