# Desenvolvimento Cronograma - grafico de dependencia final

Schedule from MS Project, 2011-04-11 to 2011-09-01.
iDEZ

## Calendars

- Padrão: Mon-Fri 09:00-12:00, 13:00-18:00; Sat-Sun off.

## Resources

| Resource |
| --- |
| ADEV |
| JEDI |
| DROIDMASTER |
| Thiago Venancio |
| Arthur |
| Paulo |
| Rafael |
| Edkarla |
| Wlysses |
| Ivan |
| Eduardo |
| Orlando |
| Davi |
| Daniel |
| Thiago Abreu |
| Gustavo |
| Bruno |

## Schedule

| ID | WBS | Task | Duration | Start | Finish | Predecessors | Total slack | Free slack | Constraint | Resources | Work |
| --- | --- | --- | --- | --- | --- | --- | --- | --- | --- | --- | --- |
| 1 | 1 | **Projeto Fitness Mobile** | 103.25d | 2011-04-11 09:00 | 2011-09-01 11:00 |  | 0d |  |  |  | 1250.5h |
| 2 | 1.1 | Resolver problemas com a IDE | 1h | 2011-04-11 09:00 | 2011-04-11 10:00 |  | 103.12d |  |  | Thiago Abreu | 1h |
| 3 | 1.2 | **RNF_03: Definição da UI para Aplicação** | 92.25d | 2011-04-11 09:00 | 2011-08-17 11:00 |  | 0d |  |  | DROIDMASTER | 758h |
| 4 | 1.2.1 | Reunião para definir Layout | 2h | 2011-04-11 09:00 | 2011-04-11 11:00 |  | 89.75d |  |  | Bruno | 2h |
| 5 | 1.2.2 | Realizar análise do requisito | 3h | 2011-08-15 09:00 | 2011-08-15 12:00 | 4 | 0d |  | start no earlier than 2011-08-15 09:00 | Daniel | 3h |
| 6 | 1.2.3 | Criar Diagrama de Classes, Caso de Uso e Diagrama de Sequencia | 4h | 2011-08-15 13:00 | 2011-08-15 17:00 | 5 | 0d |  |  | Daniel | 4h |
| 7 | 1.2.4 | Codificar | 7h | 2011-08-15 17:00 | 2011-08-16 16:00 | 6 | 0d |  |  | Rafael | 7h |
| 8 | 1.2.5 | Revisar | 2h | 2011-08-16 16:00 | 2011-08-16 18:00 | 7 | 0d |  |  | Wlysses | 2h |
| 9 | 1.2.6 | Testar | 2h | 2011-08-17 09:00 | 2011-08-17 11:00 | 8 | 0d |  |  | Wlysses | 2h |
| 10 | 1.3 | **RNF_06: Configuração do ambiente do projeto** | 1d | 2011-04-11 09:00 | 2011-04-11 18:00 |  | 91.25d |  |  |  |  |
| 11 | 1.3.1 | Analisar a necessidade do software | 3h | 2011-04-11 09:00 | 2011-04-11 12:00 |  | 91.56d | 0d |  |  |  |
| 12 | 1.3.2 | Instalar e configurar o ambiente | 5h | 2011-04-11 13:00 | 2011-04-11 18:00 | 11 | 91.56d |  |  |  |  |
| 13 | 1.4 | **RF_11: Escolha do modo de visualização** | 0.75d | 2011-08-17 11:00 | 2011-08-17 18:00 | 3 | 9.25d |  |  | JEDI | 12h |
| 14 | 1.4.1 | Realizar análise do requisito | 1h | 2011-08-17 11:00 | 2011-08-17 12:00 |  | 9.25d | 0d |  | Ivan | 1h |
| 15 | 1.4.2 | Criar Diagrama de Classes, Caso de Uso e Diagrama Objeto Relacional | 30min | 2011-08-17 13:00 | 2011-08-17 13:30 | 14 | 9.25d | 0d |  | Ivan | 0.5h |
| 16 | 1.4.3 | Definir a interface de interação com o usuário | 1h | 2011-08-17 13:30 | 2011-08-17 14:30 | 15 | 9.25d | 0d |  | Eduardo | 1h |
| 17 | 1.4.4 | Codificar | 2h | 2011-08-17 14:30 | 2011-08-17 16:30 | 16 | 9.25d | 0d |  | Eduardo | 2h |
| 18 | 1.4.5 | Revisar | 30min | 2011-08-17 16:30 | 2011-08-17 17:00 | 17 | 9.25d | 0d |  | Orlando | 0.5h |
| 19 | 1.4.6 | Testar | 1h | 2011-08-17 17:00 | 2011-08-17 18:00 | 18 | 9.25d |  |  | Davi | 1h |
| 20 | 1.5 | **RF_01: Manter dados do Usuário** | 1d | 2011-08-17 11:00 | 2011-08-18 11:00 | 3, 10 | 1.5d |  |  | JEDI | 16h |
| 21 | 1.5.1 | Realizar análise do requisito | 1h | 2011-08-17 11:00 | 2011-08-17 12:00 |  | 1.5d | 0d |  | Orlando | 1h |
| 22 | 1.5.2 | Criar Diagrama de Classes, Caso de Uso e Diagrama Objeto Relacional | 1h | 2011-08-17 13:00 | 2011-08-17 14:00 | 21 | 1.5d | 0d |  | Orlando | 1h |
| 23 | 1.5.3 | Criação da camada de acesso à base de dados | 2h | 2011-08-17 14:00 | 2011-08-17 16:00 | 22 | 1.5d | 0d |  | Ivan | 2h |
| 24 | 1.5.4 | Codificação do CRUD | 2h | 2011-08-17 16:00 | 2011-08-17 18:00 | 23 | 1.5d | 0d |  | Eduardo | 2h |
| 25 | 1.5.5 | Revisar | 1h | 2011-08-18 09:00 | 2011-08-18 10:00 | 24 | 1.5d | 0d |  | Davi | 1h |
| 26 | 1.5.6 | Testar | 1h | 2011-08-18 10:00 | 2011-08-18 11:00 | 25 | 1.5d |  |  | Davi | 1h |

Notes:
- 2: uma pessoa ficará responsavel por verificar atualizações e correções.
- 4: Fazer uma reunião no inicio do projeto para definição dos padrões,cores,etc relacionado a aplicação,registrar a pauta da reunião em documento que será disponibilizado para todas as equipes

| ID | WBS | Task | Duration | Start | Finish | Predecessors | Total slack | Free slack | Constraint | Resources | Work |
| --- | --- | --- | --- | --- | --- | --- | --- | --- | --- | --- | --- |
| 27 | 1.6 | **RF_02: Manter exercícios** | 1d | 2011-08-17 11:00 | 2011-08-18 11:00 | 3, 10 | 0d |  |  | ADEV | 16h |
| 28 | 1.6.1 | Realizar análise do requisito | 1h | 2011-08-17 11:00 | 2011-08-17 12:00 |  | 0d |  | start no earlier than 2011-08-15 09:00 | Thiago Venancio | 1h |
| 29 | 1.6.2 | Criar Diagrama de Classes, Caso de Uso e Diagrama Objeto Relacional | 1h | 2011-08-17 13:00 | 2011-08-17 14:00 | 28 | 0d |  |  | Thiago Venancio | 1h |
| 30 | 1.6.3 | Levantar estrutura da base de dados | 2h | 2011-08-17 14:00 | 2011-08-17 16:00 | 29 | 0d |  |  | Arthur | 2h |
| 31 | 1.6.4 | Codificar | 2h | 2011-08-17 16:00 | 2011-08-17 18:00 | 30 | 0d |  |  | Paulo | 2h |
| 32 | 1.6.5 | Revisar | 1h | 2011-08-18 09:00 | 2011-08-18 10:00 | 31 | 0d |  |  | Arthur | 1h |
| 33 | 1.6.6 | Testar | 1h | 2011-08-18 10:00 | 2011-08-18 11:00 | 32 | 0d |  |  | Edkarla | 1h |
| 34 | 1.7 | **RF_03: Manter programa de exercícios** | 1d | 2011-08-18 11:00 | 2011-08-19 11:00 | 33 | 0d |  |  | ADEV | 16h |
| 35 | 1.7.1 | Realizar análise do requisito | 1h | 2011-08-18 11:00 | 2011-08-18 12:00 |  | 0d |  |  | Edkarla | 1h |
| 36 | 1.7.2 | Criar Diagrama de Classes, Caso de Uso e Diagrama Objeto Relacional | 1h | 2011-08-18 13:00 | 2011-08-18 14:00 | 35 | 0d |  |  | Edkarla | 1h |
| 37 | 1.7.3 | Levantar estrutura da base de dados | 2h | 2011-08-18 14:00 | 2011-08-18 16:00 | 36 | 0d |  |  | Paulo | 2h |
| 38 | 1.7.4 | Codificar | 2h | 2011-08-18 16:00 | 2011-08-18 18:00 | 37 | 0d |  |  | Arthur | 2h |
| 39 | 1.7.5 | Revisar | 1h | 2011-08-19 09:00 | 2011-08-19 10:00 | 38 | 0d |  |  | Thiago Venancio | 1h |
| 40 | 1.7.6 | Testar | 1h | 2011-08-19 10:00 | 2011-08-19 11:00 | 39 | 0d |  |  | Edkarla | 1h |
| 41 | 1.8 | **RF_07: Registro de rastreamento do usuário via GPS** | 4.31d | 2011-08-22 09:00 | 2011-08-26 11:30 | 27 | 0.81d | 0d |  | DROIDMASTER | 96.5h |
| 42 | 1.8.1 | Realizar análise do requisito | 3h | 2011-08-22 09:00 | 2011-08-22 12:00 |  | 0.81d | 0d | start no earlier than 2011-08-22 09:00 | Bruno; Daniel | 6h |
| 43 | 1.8.2 | Criar Diagrama de Classes, Caso de Uso e Diagrama Objeto Relacional | 2h | 2011-08-22 13:00 | 2011-08-22 15:00 | 42 | 0.81d | 0d |  | Bruno; Daniel | 4h |
| 44 | 1.8.3 | Criar Plano de Teste | 2h | 2011-08-22 15:00 | 2011-08-22 17:00 | 43 | 0.81d | 0d |  | Wlysses | 2h |
| 45 | 1.8.4 | Criação da funcionalidade de iniciar registro | 4.5h | 2011-08-22 17:00 | 2011-08-23 13:30 | 44 | 0.81d | 0d |  | Thiago Abreu; Gustavo | 9h |
| 46 | 1.8.5 | Criação da funcionalidade de finalizar registro | 4.5h | 2011-08-23 13:30 | 2011-08-23 18:00 | 45 | 0.81d | 0d |  | Thiago Abreu; Gustavo | 9h |
| 47 | 1.8.6 | Acesso API para leitura dos dados | 4h | 2011-08-24 09:00 | 2011-08-24 14:00 | 46 | 0.81d | 0d |  | Thiago Abreu; Gustavo | 8h |
| 48 | 1.8.7 | Guardar na base de dados | 4.5h | 2011-08-24 14:00 | 2011-08-25 09:30 | 47 | 0.81d | 0d |  | Thiago Abreu; Gustavo | 9h |
| 49 | 1.8.8 | Atualização das informações | 5h | 2011-08-25 09:30 | 2011-08-25 15:30 | 48 | 0.81d | 0d |  | Thiago Abreu; Gustavo | 10h |
| 50 | 1.8.9 | Revisar | 2h | 2011-08-25 15:30 | 2011-08-25 17:30 | 49 | 0.81d | 0d |  | Wlysses | 2h |
| 51 | 1.8.10 | Testar | 3h | 2011-08-25 17:30 | 2011-08-26 11:30 | 50 | 0.81d |  |  | Wlysses | 3h |

Notes:
- 44: Criar um plano de teste para diminuir a possibilidade de falhas / Modificar o escopo do projeto

| ID | WBS | Task | Duration | Start | Finish | Predecessors | Total slack | Free slack | Resources | Work |
| --- | --- | --- | --- | --- | --- | --- | --- | --- | --- | --- |
| 52 | 1.9 | **RF_04: Agenda de exercícios executados(Baixa de exercicios)** | 0.5d | 2011-08-19 11:00 | 2011-08-19 16:00 | 34 | 0d |  | ADEV | 8h |
| 53 | 1.9.1 | Realizar análise do requisito | 30min | 2011-08-19 11:00 | 2011-08-19 11:30 |  | 0d |  | Thiago Venancio | 0.5h |
| 54 | 1.9.2 | Criar Diagrama de Classes, Caso de Uso e Diagrama Objeto Relacional | 30min | 2011-08-19 11:30 | 2011-08-19 12:00 | 53 | 0d |  | Thiago Venancio | 0.5h |
| 55 | 1.9.3 | Modelar um Banco de Dados para manter o cadastro dos exercicios do cliente (CRUD) | 1h | 2011-08-19 13:00 | 2011-08-19 14:00 | 54 | 0d |  | Paulo | 1h |
| 56 | 1.9.4 | Codificação | 1h | 2011-08-19 14:00 | 2011-08-19 15:00 | 55 | 0d |  | Arthur | 1h |
| 57 | 1.9.5 | Revisão | 30min | 2011-08-19 15:00 | 2011-08-19 15:30 | 56 | 0d |  | Paulo | 0.5h |
| 58 | 1.9.6 | Fazer os testes | 30min | 2011-08-19 15:30 | 2011-08-19 16:00 | 57 | 0d |  | Edkarla | 0.5h |
| 59 | 1.10 | **RF_06: Mostrar o desenvolvimento do usuário por periodo** | 7.5d | 2011-08-19 16:00 | 2011-08-31 11:00 | 20, 58 | 0d |  | JEDI | 120h |
| 60 | 1.10.1 | Analisar o requisito | 10h | 2011-08-19 16:00 | 2011-08-22 18:00 |  | 0d |  | Eduardo | 10h |
| 61 | 1.10.2 | Criar Diagrama de Classes, Caso de Uso e Diagrama Objeto Relacional | 6h | 2011-08-23 09:00 | 2011-08-23 16:00 | 60 | 0d |  | Eduardo | 6h |
| 62 | 1.10.3 | Definir a interface de interação com o usuário | 14h | 2011-08-23 16:00 | 2011-08-25 14:00 | 61 | 0d |  | Orlando | 14h |
| 63 | 1.10.4 | Codificar | 20h | 2011-08-25 14:00 | 2011-08-29 18:00 | 62 | 0d |  | Davi | 20h |
| 64 | 1.10.5 | Revisar | 4h | 2011-08-30 09:00 | 2011-08-30 14:00 | 63 | 0d |  | Ivan | 4h |
| 65 | 1.10.6 | Testar | 6h | 2011-08-30 14:00 | 2011-08-31 11:00 | 64 | 0d |  | Ivan | 6h |
| 66 | 1.11 | **RF_05: Consultar estatísticas comparativas do programa agendado e das atividades executadas** | 7.5d | 2011-08-19 16:00 | 2011-08-31 11:00 | 52 | 0d |  | ADEV | 120h |
| 67 | 1.11.1 | Realizar análise do requisito | 15h | 2011-08-19 16:00 | 2011-08-23 15:00 |  | 0d |  | Edkarla | 15h |
| 68 | 1.11.2 | Criar Diagrama de Classes, Caso de Uso e Diagrama Objeto Relacional | 9h | 2011-08-23 15:00 | 2011-08-24 16:00 | 67 | 0d |  | Edkarla | 9h |
| 69 | 1.11.3 | Codificar | 22h | 2011-08-24 16:00 | 2011-08-29 14:00 | 68 | 0d |  | Paulo | 22h |
| 70 | 1.11.4 | Revisar | 5h | 2011-08-29 14:00 | 2011-08-30 10:00 | 69 | 0d |  | Arthur | 5h |
| 71 | 1.11.5 | Testar o requisito | 9h | 2011-08-30 10:00 | 2011-08-31 11:00 | 70 | 0d |  | Thiago Venancio | 9h |
| 72 | 1.12 | **RF_10: Controle das atividades durante o exercício** | 0.75d | 2011-08-19 16:00 | 2011-08-22 14:00 | 52 | 6.75d |  | JEDI | 12h |
| 73 | 1.12.1 | Realizar análise do requisito | 1h | 2011-08-19 16:00 | 2011-08-19 17:00 |  | 6.75d | 0d | Davi | 1h |
| 74 | 1.12.2 | Criar Diagrama de Classes, Caso de Uso e Diagrama Objeto Relacional | 30min | 2011-08-19 17:00 | 2011-08-19 17:30 | 73 | 6.75d | 0d | Davi | 0.5h |
| 75 | 1.12.3 | Definir a interface de interação com o usuário | 30min | 2011-08-19 17:30 | 2011-08-19 18:00 | 74 | 6.75d | 0d | Ivan | 0.5h |
| 76 | 1.12.4 | Codificar | 2h | 2011-08-22 09:00 | 2011-08-22 11:00 | 75 | 6.75d | 0d | Ivan | 2h |
| 77 | 1.12.5 | Revisar | 30min | 2011-08-22 11:00 | 2011-08-22 11:30 | 76 | 6.75d | 0d | Eduardo | 0.5h |
| 78 | 1.12.6 | Testar | 1.5h | 2011-08-22 11:30 | 2011-08-22 14:00 | 77 | 6.75d |  | Orlando | 1.5h |

| ID | WBS | Task | Duration | Start | Finish | Predecessors | Total slack | Free slack | Resources | Work |
| --- | --- | --- | --- | --- | --- | --- | --- | --- | --- | --- |
| 79 | 1.13 | **RF_08: Fornecer Mapa do percurso percorrido** | 1.44d | 2011-08-26 11:30 | 2011-08-29 16:00 | 41 | 0.81d |  | DROIDMASTER | 29.5h |
| 80 | 1.13.1 | Realizar análise do requisito | 1.5h | 2011-08-26 11:30 | 2011-08-26 14:00 |  | 0.81d | 0d | Bruno; Daniel | 3h |
| 81 | 1.13.2 | Definir a interface de interação com o usuário, como o mapa será mostrado | 1h | 2011-08-26 14:00 | 2011-08-26 15:00 | 80 | 0.81d | 0d | Bruno; Daniel | 2h |
| 82 | 1.13.3 | Criar Diagrama de Classes, Caso de Uso e Diagrama Objeto Relacional | 0.5h | 2011-08-26 15:00 | 2011-08-26 15:30 | 81 | 0.81d | 0d | Bruno; Daniel | 1h |
| 83 | 1.13.4 | Codificar | 3.5h | 2011-08-26 15:30 | 2011-08-29 10:00 | 82 | 0.81d | 0d | Thiago Abreu; Gustavo | 7h |
| 84 | 1.13.5 | Revisar | 1h | 2011-08-29 10:00 | 2011-08-29 11:00 | 83 | 0.81d | 0d | Wlysses | 1h |
| 85 | 1.13.6 | Testar | 4h | 2011-08-29 11:00 | 2011-08-29 16:00 | 84 | 0.81d | 0d | Wlysses | 4h |
| 86 | 1.14 | **RF_09: Disponibilizar para o usuário o desempenho no percurso rastreado** | 0.69d | 2011-08-29 16:00 | 2011-08-30 13:30 | 85 | 0.81d |  | DROIDMASTER | 13.5h |
| 87 | 1.14.1 | Analisar o requisito | 0.5h | 2011-08-29 16:00 | 2011-08-29 16:30 |  | 0.81d | 0d | Bruno; Daniel | 1h |
| 88 | 1.14.2 | Criar Diagrama de Classes, Caso de Uso e Diagrama Objeto Relacional | 0.5h | 2011-08-29 16:30 | 2011-08-29 17:00 | 87 | 0.81d | 0d | Bruno; Daniel | 1h |
| 89 | 1.14.3 | Codificar | 1.5h | 2011-08-29 17:00 | 2011-08-30 09:30 | 88 | 0.81d | 0d | Thiago Abreu; Gustavo | 3h |
| 90 | 1.14.4 | Revisar | 30min | 2011-08-30 09:30 | 2011-08-30 10:00 | 89 | 0.81d | 0d | Wlysses | 0.5h |
| 91 | 1.14.5 | Testar o requisito | 2.5h | 2011-08-30 10:00 | 2011-08-30 13:30 | 90 | 0.81d |  | Wlysses | 2.5h |
| 92 | 1.15 | **Final do Projeto** | 1d | 2011-08-31 11:00 | 2011-09-01 11:00 | 3, 10, 13, 20, 27, 34, 41, 52, 59, 66, 72, 79, 91 | 0d |  |  | 32h |
| 93 | 1.15.1 | **RF_12: Exportar Informações** | 1d | 2011-08-31 11:00 | 2011-09-01 11:00 |  | 0d |  | JEDI | 16h |
| 94 | 1.15.1.1 | Realizar análise do requisito | 1.5h | 2011-08-31 11:00 | 2011-08-31 13:30 |  | 0d |  | Orlando | 1.5h |
| 95 | 1.15.1.2 | Criar Diagrama de Classes, Caso de Uso e Diagrama de Sequencia | 1h | 2011-08-31 13:30 | 2011-08-31 14:30 | 94 | 0d |  | Orlando | 1h |
| 96 | 1.15.1.3 | Codificar | 3h | 2011-08-31 14:30 | 2011-08-31 17:30 | 95 | 0d |  | Ivan | 3h |
| 97 | 1.15.1.4 | Revisar | 30min | 2011-08-31 17:30 | 2011-08-31 18:00 | 96 | 0d |  | Eduardo | 0.5h |
| 98 | 1.15.1.5 | Testar | 2h | 2011-09-01 09:00 | 2011-09-01 11:00 | 97 | 0d |  | Davi | 2h |
| 99 | 1.15.2 | **RF_13: Configuração da Aplicação** | 1d | 2011-08-31 11:00 | 2011-09-01 11:00 |  | 0d |  | ADEV | 16h |
| 100 | 1.15.2.1 | Realizar análise do requisito | 1.5h | 2011-08-31 11:00 | 2011-08-31 13:30 |  | 0d |  | Edkarla | 1.5h |
| 101 | 1.15.2.2 | Criar Diagrama de Classes, Caso de Uso e Diagrama de Sequencia | 1h | 2011-08-31 13:30 | 2011-08-31 14:30 | 100 | 0d |  | Arthur | 1h |
| 102 | 1.15.2.3 | Codificar | 3h | 2011-08-31 14:30 | 2011-08-31 17:30 | 101 | 0d |  | Paulo | 3h |
| 103 | 1.15.2.4 | Revisar | 30min | 2011-08-31 17:30 | 2011-08-31 18:00 | 102 | 0d |  | Thiago Venancio | 0.5h |
| 104 | 1.15.2.5 | Testar | 2h | 2011-09-01 09:00 | 2011-09-01 11:00 | 103 | 0d |  | Paulo | 2h |
