# Fitness Mobile

Schedule from MS Project, 2011-08-19 to 2011-10-21, A marks actual dates.

## Calendars

- Padrão: Mon-Fri 09:00-12:00, 13:00-18:00; Sat-Sun off. Exceptions (off unless hours are given): 2011-08-20 09:00-12:00, 13:00-18:00.

## Resources

| Resource |
| --- |
| Bruno |
| Daniel |
| DROIDMASTER |
| Thiago Abreu |
| Gustavo |
| Wlysses |
| Rafael |

## Schedule

| ID | WBS | Task | Duration | Start | Finish | Predecessors | Complete | Remaining | Total slack | Free slack | Constraint | Resources | Work | Actual work |
| --- | --- | --- | --- | --- | --- | --- | --- | --- | --- | --- | --- | --- | --- | --- |
| 1 | 1 | **Fitness Mobile - DroidMaster** | 46.5d | 2011-08-19 09:00 A | 2011-10-21 14:00 |  | 68% | 14.94d | 0d |  |  | DROIDMASTER | 869.25h | 387.57h |
| 2 | 1.1 | **RNF_03: Definição da UI para Aplicação** | 3.25d | 2011-08-19 09:00 A | 2011-08-23 11:00 A |  | 100% |  |  |  |  | DROIDMASTER | 60h | 60h |
| 3 | 1.1.1 | Realizar análise completa do requisito e materializar em documento | 16h | 2011-08-19 09:00 A | 2011-08-20 18:00 A |  | 100% |  |  |  | start no earlier than 2011-08-19 09:00 | Daniel | 16h | 16h |
| 4 | 1.1.2 | Construir um prototipo | 8h | 2011-08-20 09:00 A | 2011-08-20 18:00 A |  | 100% |  |  |  | start no earlier than 2011-08-20 09:00 | Thiago Abreu; Gustavo | 16h | 16h |
| 5 | 1.1.3 | Apresentar o protótipo para a turma | 2h | 2011-08-23 09:00 A | 2011-08-23 11:00 A | 4 | 100% |  |  |  | start no earlier than 2011-08-23 09:00 | Bruno | 2h | 2h |
| 6 | 1.2 | **RF_07: Registro de rastreamento do usuário via GPS** | 4.66d | 2011-08-19 09:00 A | 2011-08-24 15:15 |  | 61% | 1.8d | 41.84d |  |  | DROIDMASTER | 96.25h | 66.21h |
| 7 | 1.2.1 | Realizar análise completa do requisito e materializar em documento | 16h | 2011-08-19 09:00 A | 2011-08-20 18:00 A |  | 100% |  |  |  | finish no earlier than 2011-08-20 18:00 | Bruno; Rafael | 32h | 32h |
| 8 | 1.2.2 | Criar Diagrama de Classes, Caso de Uso e Diagrama Objeto Relacional | 3h | 2011-08-22 09:00 A | 2011-08-22 12:00 A | 7 | 100% |  |  |  |  | Bruno; Rafael | 4h | 4h |
| 9 | 1.2.3 | Levantar estrutura da base de dados | 4h | 2011-08-22 13:00 | 2011-08-22 17:00 | 8 |  |  | 13.88d |  |  | Gustavo | 4h |  |
| 10 | 1.2.4 | Codificar | 5.25h | 2011-08-23 09:00 A | 2011-08-23 15:15 A | 9 | 100% |  |  |  | finish no earlier than 2011-08-23 14:00 | Thiago Abreu; Gustavo | 7h | 7h |
| 11 | 1.2.5 | Revisar | 4h | 2011-08-23 10:15 A | 2011-08-23 15:15 | 10FF | 10% | 3.6h | 41.84d | 0d |  | Rafael | 4h | 0.4h |
| 12 | 1.2.6 | Testar | 1d | 2011-08-23 15:15 | 2011-08-24 15:15 | 11 |  |  | 12.09d |  |  | Wlysses | 8h |  |
| 13 | 1.3 | Desenvolver apresentação sobre evolução dos requisitos | 1d | 2011-08-24 17:00 A | 2011-08-25 17:00 A | 12 | 100% |  |  |  |  | Wlysses | 8h | 8h |
| 14 | 1.4 | Apresentar os requisitos 03 e 07 | 2h | 2011-08-26 09:00 A | 2011-08-26 11:00 A |  | 100% |  |  |  | start no earlier than 2011-08-26 09:00 |  |  |  |
| 15 | 1.5 | **RF_08: Fornecer Mapa do percurso percorrido** | 5.75d | 2011-09-02 09:00 A | 2011-09-09 16:00 A |  | 100% |  |  |  |  | DROIDMASTER | 210h | 210h |
| 16 | 1.5.1 | Realizar análise do requisito | 4h | 2011-09-02 09:00 A | 2011-09-02 14:00 A |  | 100% |  |  |  | start no earlier than 2011-09-02 09:00 | Bruno; Daniel; Rafael | 12h | 12h |
| 17 | 1.5.2 | Definir a interface de interação com o usuário, como o mapa será mostrado | 2d | 2011-09-02 14:00 A | 2011-09-06 14:00 A | 16 | 100% |  |  |  |  | Bruno; Daniel; Rafael | 48h | 48h |
| 18 | 1.5.3 | Criar Diagrama de Classes, Caso de Uso e Diagrama Objeto Relacional | 2d | 2011-09-02 09:00 A | 2011-09-05 18:00 A |  | 100% |  |  |  | start no earlier than 2011-09-02 09:00 | Bruno; Daniel; Rafael | 48h | 48h |
| 19 | 1.5.4 | Codificar | 3d | 2011-09-06 09:00 A | 2011-09-08 18:00 A | 18 | 100% |  |  |  |  | Thiago Abreu; Gustavo | 48h | 48h |
| 20 | 1.5.5 | Revisar | 4h | 2011-09-08 14:00 A | 2011-09-08 18:00 A | 19FF | 100% |  |  |  |  | Wlysses | 4h | 4h |
| 21 | 1.5.6 | Testar | 4h | 2011-09-08 14:00 A | 2011-09-08 18:00 A | 20FF | 100% |  |  |  |  | Wlysses | 4h | 4h |
| 22 | 1.5.7 | Desenvolver apresentação sobre evolução dos requisitos | 6h | 2011-09-08 09:00 A | 2011-09-08 16:00 A |  | 100% |  |  |  | start no earlier than 2011-09-08 09:00 |  |  |  |
| 23 | 1.5.8 | Apresentar os requisitos 07 e 08 | 6h | 2011-09-09 09:00 A | 2011-09-09 16:00 A |  | 100% |  |  |  | start no earlier than 2011-09-09 09:00 |  |  |  |
| 24 | 1.6 | **RF_09: Disponibilizar para o usuário o desempenho no percurso rastreado** | 4.5d | 2011-10-17 09:00 | 2011-10-21 14:00 | 21 |  |  | 0d |  |  | DROIDMASTER | 123h |  |
| 25 | 1.6.1 | Realizar análise do requisito | 1d | 2011-10-17 09:00 | 2011-10-17 18:00 |  |  |  | 2.5d | 0d | start no earlier than 2011-10-17 09:00 | Bruno; Daniel | 16h |  |
| 26 | 1.6.2 | Definir a interface de interação com o usuário, como o mapa será mostrado | 1d | 2011-10-18 09:00 | 2011-10-18 18:00 | 25 |  |  | 2.5d |  |  | Bruno; Daniel | 16h |  |
| 27 | 1.6.3 | Criar Diagrama de Classes, Caso de Uso e Diagrama Objeto Relacional | 4h | 2011-10-18 09:00 | 2011-10-18 14:00 |  |  |  | 3d |  | start no earlier than 2011-10-18 09:00 | Bruno; Daniel | 8h |  |
| 28 | 1.6.4 | Codificar | 2d | 2011-10-18 09:00 | 2011-10-19 18:00 |  |  |  | 0d |  | start no earlier than 2011-10-18 09:00 | Thiago Abreu; Gustavo | 32h |  |
| 29 | 1.6.5 | Revisar | 1d | 2011-10-20 09:00 | 2011-10-20 18:00 | 28 |  |  | 0d |  |  | Rafael | 8h |  |
| 30 | 1.6.6 | Testar | 4h | 2011-10-21 09:00 | 2011-10-21 14:00 | 29 |  |  | 0d |  |  | Wlysses | 4h |  |
| 31 | 1.6.7 | Desenvolver apresentação sobre evolução dos requisitos | 2h | 2011-10-21 09:00 | 2011-10-21 11:00 |  |  |  | 0.25d |  | start no earlier than 2011-10-21 09:00 | Daniel | 2h |  |
| 32 | 1.6.8 | Apresentar os requisitos 07, 08 e 09 | 1h | 2011-10-21 09:00 | 2011-10-21 10:00 |  |  |  | 0.38d |  | start no earlier than 2011-10-21 09:00 | DROIDMASTER | 1h |  |

Notes:
- 4: Lembrando que como não se tem os diagramas definidos pelos os outros grupos, o prototipo servirar mais para definir color e navegação
- 5: Fazer uma reunião no inicio do projeto para definição dos padrões,cores,etc relacionado a aplicação,registrar a pauta da reunião em documento que será disponibilizado para todas as equipes / Definir a interface de interação com o usuário, como o mapa será mostrado
